# Kế hoạch phát hành sách thiếu nhi

Schedule from MS Project, 2025-09-27 to 2026-05-21, status date 2025-09-27, costs in $, A marks actual dates.
Lucerne Publishing

## Calendars

- Standard: Mon-Fri 08:00-12:00, 13:00-17:00; Sat-Sun off.
- Monday-Wednesday: Mon-Wed 08:00-12:00, 13:00-17:00; Thu-Sun off.

## Resources

| Resource | Group | Unit | Rate |
| --- | --- | --- | --- |
| Nguyễn Minh Quân | Editorial |  | 52.5 |
| Nhân viên sao chép chỉnh sửa | Editorial |  | 45 |
| Trần Thị Thu Hà | Design |  | 75.5 |
| Lê Anh Tuấn | Editorial |  | 38.75 |
| Đinh Thị Hồng Nhung | Editorial |  | 63.25 |
| Phạm Ngọc Lan | Editorial |  | 42 |
| Võ Hoàng Nam | Design |  | 70 |
| DỊch vụ in | Production |  |  |
| Du lịch | Other |  |  |
| Bùi Văn Khải | Other |  |  |
| Dịch vụ cấu hình màu | Production |  |  |
| Bản in thử đã đóng quyển | Production | copies | 15 |

## Schedule

| ID | WBS | Task | Type | Duration | Start | Finish | Predecessors | Complete | Remaining | Baseline start | Baseline finish | Baseline duration | Total slack | Constraint | Deadline | Resources | Work | Cost | Baseline cost | Editorial Focus |
| --- | --- | --- | --- | --- | --- | --- | --- | --- | --- | --- | --- | --- | --- | --- | --- | --- | --- | --- | --- | --- |
| 1 | 1 | **Editorial staff meeting** |  | 60.12d | 2025-10-06 08:00 | 2025-12-29 09:00 |  |  |  | 2025-10-06 08:00 | 2025-12-29 09:00 | 60.12d | 103.75d |  |  |  | 45.5h | 2,223 | 2,223 |  |
| 2 | 1.1 | Editorial staff meeting 1 |  | 1h | 2025-10-06 08:00 | 2025-10-06 09:00 |  |  |  | 2025-10-06 08:00 | 2025-10-06 09:00 | 1h | 163.75d | start no earlier than 2025-10-06 08:00 |  | Nguyễn Minh Quân; Phạm Ngọc Lan; Lê Anh Tuấn; Trần Thị Thu Hà [50%] | 3.5h | 171 | 171 |  |
| 3 | 1.2 | Editorial staff meeting 2 |  | 1h | 2025-10-13 08:00 | 2025-10-13 09:00 |  |  |  | 2025-10-13 08:00 | 2025-10-13 09:00 | 1h | 158.75d | start no earlier than 2025-10-13 08:00 |  | Nguyễn Minh Quân; Phạm Ngọc Lan; Lê Anh Tuấn; Trần Thị Thu Hà [50%] | 3.5h | 171 | 171 |  |
| 4 | 1.3 | Editorial staff meeting 3 |  | 1h | 2025-10-20 08:00 | 2025-10-20 09:00 |  |  |  | 2025-10-20 08:00 | 2025-10-20 09:00 | 1h | 153.75d | start no earlier than 2025-10-20 08:00 |  | Nguyễn Minh Quân; Phạm Ngọc Lan; Lê Anh Tuấn; Trần Thị Thu Hà [50%] | 3.5h | 171 | 171 |  |
| 5 | 1.4 | Editorial staff meeting 4 |  | 1h | 2025-10-27 08:00 | 2025-10-27 09:00 |  |  |  | 2025-10-27 08:00 | 2025-10-27 09:00 | 1h | 148.75d | start no earlier than 2025-10-27 08:00 |  | Nguyễn Minh Quân; Phạm Ngọc Lan; Lê Anh Tuấn; Trần Thị Thu Hà [50%] | 3.5h | 171 | 171 |  |
| 6 | 1.5 | Editorial staff meeting 5 |  | 1h | 2025-11-03 08:00 | 2025-11-03 09:00 |  |  |  | 2025-11-03 08:00 | 2025-11-03 09:00 | 1h | 143.75d | start no earlier than 2025-11-03 08:00 |  | Nguyễn Minh Quân; Phạm Ngọc Lan; Lê Anh Tuấn; Trần Thị Thu Hà [50%] | 3.5h | 171 | 171 |  |
| 7 | 1.6 | Editorial staff meeting 6 |  | 1h | 2025-11-10 08:00 | 2025-11-10 09:00 |  |  |  | 2025-11-10 08:00 | 2025-11-10 09:00 | 1h | 138.75d | start no earlier than 2025-11-10 08:00 |  | Nguyễn Minh Quân; Phạm Ngọc Lan; Lê Anh Tuấn; Trần Thị Thu Hà [50%] | 3.5h | 171 | 171 |  |
| 8 | 1.7 | Editorial staff meeting 7 |  | 1h | 2025-11-17 08:00 | 2025-11-17 09:00 |  |  |  | 2025-11-17 08:00 | 2025-11-17 09:00 | 1h | 133.75d | start no earlier than 2025-11-17 08:00 |  | Nguyễn Minh Quân; Phạm Ngọc Lan; Lê Anh Tuấn; Trần Thị Thu Hà [50%] | 3.5h | 171 | 171 |  |
| 9 | 1.8 | Editorial staff meeting 8 |  | 1h | 2025-11-24 08:00 | 2025-11-24 09:00 |  |  |  | 2025-11-24 08:00 | 2025-11-24 09:00 | 1h | 128.75d | start no earlier than 2025-11-24 08:00 |  | Nguyễn Minh Quân; Phạm Ngọc Lan; Lê Anh Tuấn; Trần Thị Thu Hà [50%] | 3.5h | 171 | 171 |  |
| 10 | 1.9 | Editorial staff meeting 9 |  | 1h | 2025-12-01 08:00 | 2025-12-01 09:00 |  |  |  | 2025-12-01 08:00 | 2025-12-01 09:00 | 1h | 123.75d | start no earlier than 2025-12-01 08:00 |  | Nguyễn Minh Quân; Phạm Ngọc Lan; Lê Anh Tuấn; Trần Thị Thu Hà [50%] | 3.5h | 171 | 171 |  |
| 11 | 1.10 | Editorial staff meeting 10 |  | 1h | 2025-12-08 08:00 | 2025-12-08 09:00 |  |  |  | 2025-12-08 08:00 | 2025-12-08 09:00 | 1h | 118.75d | start no earlier than 2025-12-08 08:00 |  | Nguyễn Minh Quân; Phạm Ngọc Lan; Lê Anh Tuấn; Trần Thị Thu Hà [50%] | 3.5h | 171 | 171 |  |
| 12 | 1.11 | Editorial staff meeting 11 |  | 1h | 2025-12-15 08:00 | 2025-12-15 09:00 |  |  |  | 2025-12-15 08:00 | 2025-12-15 09:00 | 1h | 113.75d | start no earlier than 2025-12-15 08:00 |  | Nguyễn Minh Quân; Phạm Ngọc Lan; Lê Anh Tuấn; Trần Thị Thu Hà [50%] | 3.5h | 171 | 171 |  |
| 13 | 1.12 | Editorial staff meeting 12 |  | 1h | 2025-12-22 08:00 | 2025-12-22 09:00 |  |  |  | 2025-12-22 08:00 | 2025-12-22 09:00 | 1h | 108.75d | start no earlier than 2025-12-22 08:00 |  | Nguyễn Minh Quân; Phạm Ngọc Lan; Lê Anh Tuấn; Trần Thị Thu Hà [50%] | 3.5h | 171 | 171 |  |
| 14 | 1.13 | Editorial staff meeting 13 |  | 1h | 2025-12-29 08:00 | 2025-12-29 09:00 |  |  |  | 2025-12-29 08:00 | 2025-12-29 09:00 | 1h | 103.75d | start no earlier than 2025-12-29 08:00 |  | Nguyễn Minh Quân; Phạm Ngọc Lan; Lê Anh Tuấn; Trần Thị Thu Hà [50%] | 3.5h | 171 | 171 |  |
| 15 | 2 | **Mua sắm** |  | 35.5d | 2025-09-27 08:00 A | 2025-11-17 12:00 |  |  | 35.5d | 2025-09-27 08:00 | 2025-11-17 12:00 | 35.5d | 0d |  |  |  | 444h | 18,264 | 18,264 |  |
| 16 | 2.1 | Tiếp nhận bản thảo | milestone | 0d | 2025-09-27 08:00 A | 2025-09-27 08:00 A |  | 100% |  | 2025-09-27 08:00 | 2025-09-27 08:00 | 0d |  |  |  |  |  |  |  |  |
| 17 | 2.2 | Biên tập nội dung |  | 15d | 2025-09-29 08:00 | 2025-10-23 10:00 | 16 |  |  | 2025-09-29 08:00 | 2025-10-23 10:00 | 15d | 0d |  |  | Nguyễn Minh Quân | 120h | 6,300 | 6,300 | Full developmental edit |
| 18 | 2.3 | Đánh giá bản vẽ gốc |  | 10.25d | 2025-10-16 10:00 | 2025-10-30 12:00 | 17FS-5d |  |  | 2025-10-16 10:00 | 2025-10-30 12:00 | 10.25d | 0d |  |  | Lê Anh Tuấn; Đinh Thị Hồng Nhung | 164h | 8,364 | 8,364 |  |
| 19 | 2.4 | Tác giả duyệt bản biên tập nội dung |  | 12d | 2025-10-30 13:00 | 2025-11-17 12:00 | 17, 18 |  |  | 2025-10-30 13:00 | 2025-11-17 12:00 | 12d | 0d |  |  | Bùi Văn Khải; Nhân viên sao chép chỉnh sửa | 160h | 3,600 | 3,600 | Incorp must-fix issues |
| 20 | 2.5 | Chuyển giao cho bộ phận biên tập | milestone | 0d | 2025-11-17 12:00 | 2025-11-17 12:00 | 19 |  |  | 2025-11-17 12:00 | 2025-11-17 12:00 | 0d | 0d |  | 2025-11-21 13:00 | Nguyễn Minh Quân |  |  |  |  |
| 21 | 3 | **Ban biên tập** |  | 29.12d | 2025-11-17 13:00 | 2025-12-26 14:00 | 15 |  |  | 2025-11-17 13:00 | 2025-12-26 14:00 | 29.12d | 0d |  |  |  | 400h | 15,670 | 15,670 |  |
| 22 | 3.1 | Chuẩn bị bản thảo cho biên tập chi tiết |  | 5.12d | 2025-11-17 13:00 | 2025-11-24 14:00 |  |  |  | 2025-11-17 13:00 | 2025-11-24 14:00 | 5.12d | 0d |  |  | Lê Anh Tuấn; Trần Thị Thu Hà [50%] | 60h | 3,060 | 3,060 | Address outstanding line edit issues |
| 23 | 3.2 | Biên tập chính tả & hình thức |  | 11.25d | 2025-11-24 14:00 | 2025-12-09 16:00 | 22 |  |  | 2025-11-24 14:00 | 2025-12-09 16:00 | 11.25d | 0d |  |  | Nhân viên sao chép chỉnh sửa [200%] | 180h | 8,100 | 8,100 | Style Guide compliance |
| 24 | 3.3 | Tác giả duyệt biên tập chính tả & hình thức |  | 10d | 2025-12-09 16:00 | 2025-12-23 16:00 | 23 |  |  | 2025-12-09 16:00 | 2025-12-23 16:00 | 10d | 0d |  |  | Bùi Văn Khải; Nhân viên sao chép chỉnh sửa [25%] | 100h | 900 | 900 | Incorp must-fix issues |
| 25 | 3.4 | Tích hợp chỉnh sửa biên tập chính tả & hình thức |  | 5.12d | 2025-12-19 11:00 | 2025-12-26 14:00 | 24FS-2.5% |  |  | 2025-12-19 11:00 | 2025-12-26 14:00 | 5.12d | 0d |  |  | Nguyễn Minh Quân; Trần Thị Thu Hà [50%] | 60h | 3,610 | 3,610 | Incorp must-fix issues |
| 26 | 3.5 | Bàn giao cho bộ phận sản xuất | milestone | 0d | 2025-12-26 14:00 | 2025-12-26 14:00 | 25 |  |  | 2025-12-26 14:00 | 2025-12-26 14:00 | 0d | 0d |  |  | Lê Anh Tuấn |  |  |  |  |

| ID | WBS | Task | Type | Duration | Start | Finish | Predecessors | Baseline start | Baseline finish | Baseline duration | Total slack | Free slack | Constraint | Calendar | Resources | Work | Cost | Baseline cost |
| --- | --- | --- | --- | --- | --- | --- | --- | --- | --- | --- | --- | --- | --- | --- | --- | --- | --- | --- |
| 27 | 4 | **Thiết kế và sản xuất** |  | 58.25d | 2025-12-26 14:00 | 2026-03-18 16:00 | 21 | 2025-12-26 14:00 | 2026-03-18 16:00 | 58.25d | 0d |  |  |  |  | 888h | 46,679 | 46,679 |
| 28 | 4.1 | Dàn trang |  | 15d | 2025-12-26 14:00 | 2026-01-16 14:00 |  | 2025-12-26 14:00 | 2026-01-16 14:00 | 15d | 0d |  |  |  | Đinh Thị Hồng Nhung | 120h | 7,590 | 7,590 |
| 29 | 4.2 | Thiết kế minh họa nội thất (trong sách) |  | 15.25d | 2025-12-26 14:00 | 2026-01-16 16:00 | 28SS | 2025-12-26 14:00 | 2026-01-16 16:00 | 15.25d | 0d |  |  |  | Võ Hoàng Nam; Lê Anh Tuấn | 240h | 13,050 | 13,050 |
| 30 | 4.3 | **Duyệt bản trang lần 1** |  | 30d | 2026-01-16 16:00 | 2026-02-27 16:00 | 29 | 2026-01-16 16:00 | 2026-02-27 16:00 | 30d | 0d |  |  |  |  | 320h | 13,860 | 13,860 |
| 31 | 4.3.1 | Hiệu đính và lập mục lục |  | 10d | 2026-01-16 16:00 | 2026-01-30 16:00 |  | 2026-01-16 16:00 | 2026-01-30 16:00 | 10d | 0d |  | start no earlier than 2026-01-07 08:00 |  | Bùi Văn Khải; Nhân viên sao chép chỉnh sửa | 100h | 900 | 900 |
| 32 | 4.3.2 | Tích hợp chỉnh sửa từ duyệt bản trang lần 1 |  | 10d | 2026-01-30 16:00 | 2026-02-13 16:00 | 31 | 2026-01-30 16:00 | 2026-02-13 16:00 | 10d | 0d |  |  |  | Lê Anh Tuấn; Trần Thị Thu Hà [50%] | 120h | 6,120 | 6,120 |
| 33 | 4.3.3 | Gửi bản đã hiệu đính cho sản xuất | milestone | 0d | 2026-02-13 16:00 | 2026-02-13 16:00 | 32 | 2026-02-13 16:00 | 2026-02-13 16:00 | 0d | 0d |  |  |  | Lê Anh Tuấn |  |  |  |
| 34 | 4.3.4 | Nhập chỉnh sửa trang và mục lục |  | 5d | 2026-02-13 16:00 | 2026-02-20 16:00 | 33 | 2026-02-13 16:00 | 2026-02-20 16:00 | 5d | 0d |  |  |  | Đinh Thị Hồng Nhung; Trần Thị Thu Hà [50%] | 60h | 4,040 | 4,040 |
| 35 | 4.3.5 | Thiết kế bìa |  | 5d | 2026-02-20 16:00 | 2026-02-27 16:00 | 34 | 2026-02-20 16:00 | 2026-02-27 16:00 | 5d | 0d |  |  |  | Võ Hoàng Nam | 40h | 2,800 | 2,800 |
| 36 | 4.4 | **Duyệt bản trang lần 2** |  | 13d | 2026-02-27 16:00 | 2026-03-18 16:00 |  | 2026-02-27 16:00 | 2026-03-18 16:00 | 13d | 0d |  |  |  |  | 120h | 6,345 | 6,345 |
| 37 | 4.4.1 | Hiệu đính và duyệt lại |  | 6.5d | 2026-02-27 16:00 | 2026-03-10 11:00 | 35 | 2026-02-27 16:00 | 2026-03-10 11:00 | 6.5d | 0d |  |  |  | Lê Anh Tuấn | 40h | 1,800 | 1,800 |
| 38 | 4.4.2 | Gửi bản đã hiệu đính cho sản xuất | milestone | 0d | 2026-03-10 11:00 | 2026-03-10 11:00 | 37 | 2026-03-10 11:00 | 2026-03-10 11:00 | 0d | 0d |  |  |  | Lê Anh Tuấn |  |  |  |
| 39 | 4.4.3 | Duyệt cuối cùng |  | 5d | 2026-03-11 16:00 | 2026-03-18 16:00 | 38 | 2026-03-11 16:00 | 2026-03-18 16:00 | 5d | 0d |  |  |  | Đinh Thị Hồng Nhung; Lê Anh Tuấn [50%]; Nguyễn Minh Quân [50%]; Bản in thử đã đóng quyển [20 copies] | 80h | 4,545 | 4,545 |
| 40 | 4.5 | **Thiết kế website đi kèm sách** |  | 10d | 2026-02-27 16:00 | 2026-03-13 16:00 | 30 | 2026-02-27 16:00 | 2026-03-13 16:00 | 10d | 3d |  |  |  |  | 88h | 5,834 | 5,834 |
| 41 | 4.5.1 | Tạo bản mẫu (mockup) |  | 4.5d | 2026-02-27 16:00 | 2026-03-11 16:00 |  | 2026-02-27 16:00 | 2026-03-11 16:00 | 4.5d | 3d | 0d |  |  | Võ Hoàng Nam; Lê Anh Tuấn | 48h | 2,610 | 2,610 |
| 42 | 4.5.2 | Duyệt cùng tác giả |  | 2d | 2026-03-11 16:00 | 2026-03-13 16:00 | 41 | 2026-03-11 16:00 | 2026-03-13 16:00 | 2d | 3d |  |  |  | Võ Hoàng Nam; Bùi Văn Khải; Du lịch [0.1%]; Trần Thị Thu Hà [50%] | 40h | 3,224 | 3,224 |
| 43 | 5 | **Chuẩn bị màu và in ấn** |  | 46d | 2026-03-18 16:00 | 2026-05-21 16:00 | 40 | 2026-03-18 16:00 | 2026-05-21 16:00 | 46d | 0d |  |  |  |  | 328h | 5,310 | 5,310 |
| 44 | 5.1 | Gửi đến nhà in màu |  | 1d | 2026-03-18 16:00 | 2026-03-23 16:00 | 36 | 2026-03-18 16:00 | 2026-03-23 16:00 | 1d | 0d |  |  | Monday-Wednesday | Lê Anh Tuấn | 8h | 310 | 310 |
| 45 | 5.2 | Tạo bản in thử |  | 10d | 2026-03-23 16:00 | 2026-04-06 16:00 | 44 | 2026-03-23 16:00 | 2026-04-06 16:00 | 10d | 0d |  |  |  | Dịch vụ cấu hình màu | 80h | 5,000 | 5,000 |
| 46 | 5.3 | In và vận chuyển |  | 30d | 2026-04-09 16:00 | 2026-05-21 16:00 | 45FS+3d | 2026-04-09 16:00 | 2026-05-21 16:00 | 30d | 0d |  |  |  | DỊch vụ in | 240h |  |  |
| 47 | 6 | **Chuẩn bị ra mắt sách** |  | 22d | 2026-03-23 16:00 | 2026-04-22 16:00 |  | 2026-03-23 16:00 | 2026-04-22 16:00 | 22d | 21d |  |  |  |  | 212h | 9,442 | 9,442 |
| 48 | 6.1 | Lập kế hoạch ra mắt |  | 5d | 2026-03-23 16:00 | 2026-03-30 16:00 | 44 | 2026-03-23 16:00 | 2026-03-30 16:00 | 5d | 21d | 0d |  |  | Nguyễn Minh Quân [50%]; Đinh Thị Hồng Nhung | 36h | 2,062 | 2,062 |
| 49 | 6.2 | Phân công thành viên nhóm ra mắt |  | 1d | 2026-03-30 16:00 | 2026-03-31 16:00 | 48 | 2026-03-30 16:00 | 2026-03-31 16:00 | 1d | 21d | 0d |  |  | Nguyễn Minh Quân | 8h | 420 | 420 |
| 50 | 6.3 | Hoàn thành bảng câu hỏi cho tác giả |  | 5d | 2026-03-31 16:00 | 2026-04-07 16:00 | 49 | 2026-03-31 16:00 | 2026-04-07 16:00 | 5d | 21d | 0d |  |  | Lê Anh Tuấn; Bùi Văn Khải; Du lịch [0.1%] | 80h | 3,550 | 3,550 |
| 51 | 6.4 | Sắp xếp phỏng vấn tác giả |  | 1d | 2026-04-07 16:00 | 2026-04-08 16:00 | 50 | 2026-04-07 16:00 | 2026-04-08 16:00 | 1d | 21d | 0d |  |  | Lê Anh Tuấn | 8h | 310 | 310 |
| 52 | 6.5 | Thiết kế và đặt in tài liệu marketing |  | 10d | 2026-04-08 16:00 | 2026-04-22 16:00 | 51 | 2026-04-08 16:00 | 2026-04-22 16:00 | 10d | 21d |  |  |  | Lê Anh Tuấn | 80h | 3,100 | 3,100 |
