# Lịch xuất bản sách thiếu nhi

Schedule from MS Project, 2025-09-29 to 2026-05-21, status date 2025-09-27, costs in $, A marks actual dates.
Lucerne Publishing

## Calendars

- Standard: Mon-Fri 08:00-12:00, 13:00-17:00; Sat-Sun off.
- Monday-Wednesday: Mon-Wed 08:00-12:00, 13:00-17:00; Thu-Sun off.

## Resources

| Resource | Group | Unit | Rate |
| --- | --- | --- | --- |
| Nguyễn Minh Quân | Editorial |  | 52.5 |
| Người biên tập ngôn ngữ | Editorial |  | 45 |
| Trần Thị Thu Hà | Design |  | 75.5 |
| Lê Anh Tuấn | Editorial |  | 38.75 |
| Phạm Ngọc Lan | Editorial |  | 63.25 |
| Võ Hoàng Nam | Editorial |  | 42 |
| Đinh Thị Hồng Nhung | Design |  | 70 |
| Dịch vụ in ấn | Production |  |  |
| Du lịch | Other |  |  |
| Bùi Văn Khải | Other |  |  |
| Dịch vụ chỉnh màu in ấn | Production |  |  |
| Bản in thử đã đóng quyển | Production | copies | 15 |

## Schedule

| ID | WBS | Task | Type | Duration | Start | Finish | Predecessors | Complete | Remaining | Baseline start | Baseline finish | Baseline duration | Total slack | Constraint | Deadline | Resources | Work | Actual work | Cost | Baseline cost | Actual cost | Editorial Focus |
| --- | --- | --- | --- | --- | --- | --- | --- | --- | --- | --- | --- | --- | --- | --- | --- | --- | --- | --- | --- | --- | --- | --- |
| 1 | 1 | **Editorial staff meeting** |  | 80.12d | 2025-10-06 08:00 A | 2026-01-26 09:00 |  | 54% | 36.98d | 2015-04-13 08:00 | 2015-07-06 09:00 | 60.12d | 83.88d |  |  |  | 45.5h | 24.5h | 2,223 | 2,223 | 1,197 |  |
| 2 | 1.1 | Editorial staff meeting 1 |  | 1h | 2025-10-06 08:00 A | 2025-10-06 09:00 A |  | 100% |  | 2015-04-13 08:00 | 2015-04-13 09:00 | 1h |  | start no earlier than 2025-10-06 08:00 |  | Nguyễn Minh Quân; Võ Hoàng Nam; Lê Anh Tuấn; Trần Thị Thu Hà [50%] | 3.5h | 3.5h | 171 | 171 | 171 |  |
| 3 | 1.2 | Editorial staff meeting 2 |  | 1h | 2025-10-13 08:00 A | 2025-10-13 09:00 A |  | 100% |  | 2015-04-20 08:00 | 2015-04-20 09:00 | 1h |  | start no earlier than 2025-10-13 08:00 |  | Nguyễn Minh Quân; Võ Hoàng Nam; Lê Anh Tuấn; Trần Thị Thu Hà [50%] | 3.5h | 3.5h | 171 | 171 | 171 |  |
| 4 | 1.3 | Editorial staff meeting 3 |  | 1h | 2025-10-20 08:00 A | 2025-10-20 09:00 A |  | 100% |  | 2015-04-27 08:00 | 2015-04-27 09:00 | 1h |  | start no earlier than 2025-10-20 08:00 |  | Nguyễn Minh Quân; Võ Hoàng Nam; Lê Anh Tuấn; Trần Thị Thu Hà [50%] | 3.5h | 3.5h | 171 | 171 | 171 |  |
| 5 | 1.4 | Editorial staff meeting 4 |  | 1h | 2025-10-27 08:00 A | 2025-10-27 09:00 A |  | 100% |  | 2015-05-04 08:00 | 2015-05-04 09:00 | 1h |  | start no earlier than 2025-10-27 08:00 |  | Nguyễn Minh Quân; Võ Hoàng Nam; Lê Anh Tuấn; Trần Thị Thu Hà [50%] | 3.5h | 3.5h | 171 | 171 | 171 |  |
| 6 | 1.5 | Editorial staff meeting 5 |  | 1h | 2025-11-03 08:00 A | 2025-11-03 09:00 A |  | 100% |  | 2015-05-11 08:00 | 2015-05-11 09:00 | 1h |  | start no earlier than 2025-11-03 08:00 |  | Nguyễn Minh Quân; Võ Hoàng Nam; Lê Anh Tuấn; Trần Thị Thu Hà [50%] | 3.5h | 3.5h | 171 | 171 | 171 |  |
| 7 | 1.6 | Editorial staff meeting 6 |  | 1h | 2025-11-10 08:00 A | 2025-11-10 09:00 A |  | 100% |  | 2015-05-18 08:00 | 2015-05-18 09:00 | 1h |  | start no earlier than 2025-11-10 08:00 |  | Nguyễn Minh Quân; Võ Hoàng Nam; Lê Anh Tuấn; Trần Thị Thu Hà [50%] | 3.5h | 3.5h | 171 | 171 | 171 |  |
| 8 | 1.7 | Editorial staff meeting 7 |  | 1h | 2025-11-17 08:00 A | 2025-11-17 09:00 A |  | 100% |  | 2015-05-25 08:00 | 2015-05-25 09:00 | 1h |  | start no earlier than 2025-11-17 08:00 |  | Nguyễn Minh Quân; Võ Hoàng Nam; Lê Anh Tuấn; Trần Thị Thu Hà [50%] | 3.5h | 3.5h | 171 | 171 | 171 |  |
| 9 | 1.8 | Editorial staff meeting 8 |  | 1h | 2026-01-26 08:00 | 2026-01-26 09:00 |  |  |  | 2015-06-01 08:00 | 2015-06-01 09:00 | 1h | 83.88d | start no earlier than 2026-01-26 08:00 |  | Nguyễn Minh Quân; Võ Hoàng Nam; Lê Anh Tuấn; Trần Thị Thu Hà [50%] | 3.5h |  | 171 | 171 |  |  |
| 10 | 1.9 | Editorial staff meeting 9 |  | 1h | 2026-01-26 08:00 | 2026-01-26 09:00 |  |  |  | 2015-06-08 08:00 | 2015-06-08 09:00 | 1h | 83.88d | start no earlier than 2026-01-26 08:00 |  | Nguyễn Minh Quân; Võ Hoàng Nam; Lê Anh Tuấn; Trần Thị Thu Hà [50%] | 3.5h |  | 171 | 171 |  |  |
| 11 | 1.10 | Editorial staff meeting 10 |  | 1h | 2026-01-26 08:00 | 2026-01-26 09:00 |  |  |  | 2015-06-15 08:00 | 2015-06-15 09:00 | 1h | 83.88d | start no earlier than 2026-01-26 08:00 |  | Nguyễn Minh Quân; Võ Hoàng Nam; Lê Anh Tuấn; Trần Thị Thu Hà [50%] | 3.5h |  | 171 | 171 |  |  |
| 12 | 1.11 | Editorial staff meeting 11 |  | 1h | 2026-01-26 08:00 | 2026-01-26 09:00 |  |  |  | 2015-06-22 08:00 | 2015-06-22 09:00 | 1h | 83.88d | start no earlier than 2026-01-26 08:00 |  | Nguyễn Minh Quân; Võ Hoàng Nam; Lê Anh Tuấn; Trần Thị Thu Hà [50%] | 3.5h |  | 171 | 171 |  |  |
| 13 | 1.12 | Editorial staff meeting 12 |  | 1h | 2026-01-26 08:00 | 2026-01-26 09:00 |  |  |  | 2015-06-29 08:00 | 2015-06-29 09:00 | 1h | 83.88d | start no earlier than 2026-01-26 08:00 |  | Nguyễn Minh Quân; Võ Hoàng Nam; Lê Anh Tuấn; Trần Thị Thu Hà [50%] | 3.5h |  | 171 | 171 |  |  |
| 14 | 1.13 | Editorial staff meeting 13 |  | 1h | 2026-01-26 08:00 | 2026-01-26 09:00 |  |  |  | 2015-07-06 08:00 | 2015-07-06 09:00 | 1h | 83.88d | start no earlier than 2026-01-26 08:00 |  | Nguyễn Minh Quân; Võ Hoàng Nam; Lê Anh Tuấn; Trần Thị Thu Hà [50%] | 3.5h |  | 171 | 171 |  |  |
| 15 | 2 | **Tiếp nhận bản thảo** |  | 35d | 2025-09-29 08:00 A | 2025-11-17 08:00 A |  | 100% |  | 2015-04-06 08:00 | 2015-05-25 12:00 | 35.5d |  |  |  |  | 468h | 468h | 18,804 | 18,264 | 18,804 |  |
| 16 | 2.1 | Đã nhận bản thảo | milestone | 0d | 2025-09-29 08:00 A | 2025-09-29 08:00 A |  | 100% |  | 2015-04-06 08:00 | 2015-04-06 08:00 | 0d |  |  |  |  |  |  |  |  |  |  |
| 17 | 2.2 | Biên tập nội dung |  | 15d | 2025-09-29 08:00 A | 2025-10-23 10:00 A | 16 | 100% |  | 2015-04-06 08:00 | 2015-04-30 10:00 | 15d |  |  |  | Nguyễn Minh Quân | 120h | 120h | 6,300 | 6,300 | 6,300 | Full developmental edit |
| 18 | 2.3 | Duyệt tranh minh họa gốc |  | 10.25d | 2025-10-14 10:00 A | 2025-10-28 12:00 A | 17FS-5d | 100% |  | 2015-04-23 10:00 | 2015-05-07 12:00 | 10.25d |  |  |  | Lê Anh Tuấn; Phạm Ngọc Lan | 164h | 164h | 8,364 | 8,364 | 8,364 |  |
| 19 | 2.4 | Tác giả duyệt biên tập nội dung |  | 13.5d | 2025-10-28 13:00 A | 2025-11-14 17:00 A | 17, 18 | 100% |  | 2015-05-07 13:00 | 2015-05-25 12:00 | 12d |  |  |  | Bùi Văn Khải; Người biên tập ngôn ngữ | 184h | 184h | 4,140 | 3,600 | 4,140 | Incorp must-fix issues |
| 20 | 2.5 | Bàn giao cho ban biên tập | milestone | 0d | 2025-11-17 08:00 A | 2025-11-17 08:00 A | 19 | 100% |  | 2015-05-25 12:00 | 2015-05-25 12:00 | 0d |  |  | 2025-11-20 08:00 | Nguyễn Minh Quân |  |  |  |  |  |  |
| 21 | 3 | **Biên tập** |  | 30.25d | 2025-11-17 08:00 A | 2025-12-29 10:00 A | 15 | 100% |  | 2015-05-25 13:00 | 2015-07-03 14:00 | 29.12d |  |  |  |  | 413h | 413h | 16,201 | 15,670 | 16,201 |  |
| 22 | 3.1 | Sắp xếp bản thảo để biên tập chính tả & hình thức |  | 5d | 2025-11-17 08:00 A | 2025-11-21 17:00 A |  | 100% |  | 2015-05-25 13:00 | 2015-06-01 14:00 | 5.12d |  |  |  | Lê Anh Tuấn; Trần Thị Thu Hà [50%] | 63h | 63h | 3,213 | 3,060 | 3,213 | Address outstanding line edit issues |
| 23 | 3.2 | Biên tập chính tả & hình thức |  | 10.5d | 2025-11-24 08:00 A | 2025-12-08 12:00 A | 22 | 100% |  | 2015-06-01 14:00 | 2015-06-16 16:00 | 11.25d |  |  |  | Người biên tập ngôn ngữ [200%] | 188h | 188h | 8,460 | 8,100 | 8,460 | Style Guide compliance |
| 24 | 3.3 | Tác giả duyệt biên tập chính tả & hình thức |  | 10.2d | 2025-12-08 13:00 A | 2025-12-22 14:36 A | 23 | 100% |  | 2015-06-16 16:00 | 2015-06-30 16:00 | 10d |  |  |  | Bùi Văn Khải; Người biên tập ngôn ngữ [25%] | 102h | 102h | 918 | 900 | 918 | Incorp must-fix issues |
| 25 | 3.4 | Tích hợp chỉnh sửa biên tập chính tả & hình thức |  | 5.12d | 2025-12-22 08:00 A | 2025-12-29 10:00 A | 24FS-2.5% | 100% |  | 2015-06-26 11:00 | 2015-07-03 14:00 | 5.12d |  |  |  | Nguyễn Minh Quân; Trần Thị Thu Hà [50%] | 60h | 60h | 3,610 | 3,610 | 3,610 | Incorp must-fix issues |
| 26 | 3.5 | Bàn giao cho bộ phận sản xuất | milestone | 0d | 2025-12-29 08:00 A | 2025-12-29 08:00 A | 25 | 100% |  | 2015-07-03 14:00 | 2015-07-03 14:00 | 0d |  |  |  | Lê Anh Tuấn |  |  |  |  |  |  |

| ID | WBS | Task | Type | Duration | Start | Finish | Predecessors | Complete | Remaining | Baseline start | Baseline finish | Baseline duration | Total slack | Free slack | Constraint | Calendar | Resources | Work | Actual work | Cost | Baseline cost | Actual cost |
| --- | --- | --- | --- | --- | --- | --- | --- | --- | --- | --- | --- | --- | --- | --- | --- | --- | --- | --- | --- | --- | --- | --- |
| 27 | 4 | **Thiết kế và sản xuất** |  | 60d | 2025-12-29 08:00 A | 2026-03-20 17:00 | 21 | 43% | 34.24d | 2015-07-03 14:00 | 2015-09-23 16:00 | 58.25d | 0d |  |  |  |  | 927.6h | 431.6h | 48,863.5 | 46,679 | 23,544.5 |
| 28 | 4.1 | Dàn trang |  | 15d | 2025-12-29 08:00 A | 2026-01-16 17:00 A |  | 100% |  | 2015-07-03 14:00 | 2015-07-24 14:00 | 15d |  |  |  |  | Phạm Ngọc Lan | 120h | 120h | 7,590 | 7,590 | 7,590 |
| 29 | 4.2 | Thiết kế minh họa nội dung sách |  | 17.6d | 2025-12-29 08:00 A | 2026-01-21 13:48 A | 28SS | 100% |  | 2015-07-03 14:00 | 2015-07-24 16:00 | 15.25d |  |  |  |  | Đinh Thị Hồng Nhung; Lê Anh Tuấn | 279.6h | 279.6h | 15,234.5 | 13,050 | 15,234.5 |
| 30 | 4.3 | **Duyệt bản trang lần 1** |  | 32d | 2026-01-20 08:00 A | 2026-03-04 17:00 | 29 | 7% | 29.87d | 2015-07-24 16:00 | 2015-09-04 16:00 | 30d | 0d |  |  |  |  | 320h | 32h | 13,860 | 13,860 | 720 |
| 31 | 4.3.1 | Hiệu đính và lập mục lục |  | 10d | 2026-01-20 08:00 A | 2026-02-04 17:00 |  | 20% | 8d | 2015-07-24 16:00 | 2015-08-07 16:00 | 10d | 0d |  | start no earlier than 2026-01-07 08:00 |  | Bùi Văn Khải; Người biên tập ngôn ngữ | 100h | 32h | 900 | 900 | 720 |
| 32 | 4.3.2 | Tích hợp chỉnh sửa từ duyệt bản trang lần 1 |  | 10d | 2026-02-05 08:00 | 2026-02-18 17:00 | 31 |  |  | 2015-08-07 16:00 | 2015-08-21 16:00 | 10d | 0d |  |  |  | Lê Anh Tuấn; Trần Thị Thu Hà [50%] | 120h |  | 6,120 | 6,120 |  |
| 33 | 4.3.3 | Gửi bản đã hiệu đính cho sản xuất | milestone | 0d | 2026-02-18 17:00 | 2026-02-18 17:00 | 32 |  |  | 2015-08-21 16:00 | 2015-08-21 16:00 | 0d | 0d |  |  |  | Lê Anh Tuấn |  |  |  |  |  |
| 34 | 4.3.4 | Nhập chỉnh sửa trang và mục lục |  | 5d | 2026-02-19 08:00 | 2026-02-25 17:00 | 33 |  |  | 2015-08-21 16:00 | 2015-08-28 16:00 | 5d | 0d |  |  |  | Phạm Ngọc Lan; Trần Thị Thu Hà [50%] | 60h |  | 4,040 | 4,040 |  |
| 35 | 4.3.5 | Thiết kế bìa |  | 5d | 2026-02-26 08:00 | 2026-03-04 17:00 | 34 |  |  | 2015-08-28 16:00 | 2015-09-04 16:00 | 5d | 0d |  |  |  | Đinh Thị Hồng Nhung | 40h |  | 2,800 | 2,800 |  |
| 36 | 4.4 | **Duyệt bản trang lần 2** |  | 12d | 2026-03-05 08:00 | 2026-03-20 17:00 |  |  |  | 2015-09-04 16:00 | 2015-09-23 16:00 | 13d | 0d |  |  |  |  | 120h |  | 6,345 | 6,345 |  |
| 37 | 4.4.1 | Hiệu đính và duyệt lại |  | 6.5d | 2026-03-05 08:00 | 2026-03-13 12:00 | 35 |  |  | 2015-09-04 16:00 | 2015-09-15 11:00 | 6.5d | 0d |  |  |  | Lê Anh Tuấn | 40h |  | 1,800 | 1,800 |  |
| 38 | 4.4.2 | Gửi bản đã hiệu đính cho sản xuất | milestone | 0d | 2026-03-13 12:00 | 2026-03-13 12:00 | 37 |  |  | 2015-09-15 11:00 | 2015-09-15 11:00 | 0d | 0d |  |  |  | Lê Anh Tuấn |  |  |  |  |  |
| 39 | 4.4.3 | Duyệt cuối cùng |  | 5d | 2026-03-16 08:00 | 2026-03-20 17:00 | 38 |  |  | 2015-09-16 16:00 | 2015-09-23 16:00 | 5d | 0d |  |  |  | Phạm Ngọc Lan; Lê Anh Tuấn [50%]; Nguyễn Minh Quân [50%]; Bản in thử đã đóng quyển [20 copies] | 80h |  | 4,545 | 4,545 |  |
| 40 | 4.5 | **Thiết kế website đi kèm sách** |  | 10d | 2026-03-05 08:00 | 2026-03-18 17:00 | 30 |  |  | 2015-09-04 16:00 | 2015-09-18 16:00 | 10d | 2d |  |  |  |  | 88h |  | 5,834 | 5,834 |  |
| 41 | 4.5.1 | Tạo bản mẫu |  | 4.5d | 2026-03-05 08:00 | 2026-03-16 17:00 |  |  |  | 2015-09-04 16:00 | 2015-09-16 16:00 | 4.5d | 2d | 0d |  |  | Đinh Thị Hồng Nhung; Lê Anh Tuấn | 48h |  | 2,610 | 2,610 |  |
| 42 | 4.5.2 | Duyệt cùng tác giả |  | 2d | 2026-03-17 08:00 | 2026-03-18 17:00 | 41 |  |  | 2015-09-16 16:00 | 2015-09-18 16:00 | 2d | 2d |  |  |  | Đinh Thị Hồng Nhung; Bùi Văn Khải; Du lịch [0.1%]; Trần Thị Thu Hà [50%] | 40h |  | 3,224 | 3,224 |  |
| 43 | 5 | **Chuẩn bị màu và in** |  | 44d | 2026-03-23 08:00 | 2026-05-21 17:00 | 40 |  |  | 2015-09-23 16:00 | 2015-11-26 16:00 | 46d | 0d |  |  |  |  | 328h |  | 5,310 | 5,310 |  |
| 44 | 5.1 | Gửi đến nhà in màu |  | 1d | 2026-03-23 08:00 | 2026-03-23 17:00 | 36 |  |  | 2015-09-23 16:00 | 2015-09-28 16:00 | 1d | 0d |  |  | Monday-Wednesday | Lê Anh Tuấn | 8h |  | 310 | 310 |  |
| 45 | 5.2 | Tạo bản in thử |  | 10d | 2026-03-24 08:00 | 2026-04-06 17:00 | 44 |  |  | 2015-09-28 16:00 | 2015-10-12 16:00 | 10d | 0d |  |  |  | Dịch vụ chỉnh màu in ấn | 80h |  | 5,000 | 5,000 |  |
| 46 | 5.3 | In và vận chuyển |  | 30d | 2026-04-10 08:00 | 2026-05-21 17:00 | 45FS+3d |  |  | 2015-10-15 16:00 | 2015-11-26 16:00 | 30d | 0d |  |  |  | Dịch vụ in ấn | 240h |  |  |  |  |
| 47 | 6 | **Chuẩn bị ra mắt sách** |  | 22d | 2026-03-24 08:00 | 2026-04-22 17:00 |  |  |  | 2015-09-28 16:00 | 2015-10-28 16:00 | 22d | 21d |  |  |  |  | 212h |  | 9,442 | 9,442 |  |
| 48 | 6.1 | Lập kế hoạch ra mắt |  | 5d | 2026-03-24 08:00 | 2026-03-30 17:00 | 44 |  |  | 2015-09-28 16:00 | 2015-10-05 16:00 | 5d | 21d | 0d |  |  | Nguyễn Minh Quân [50%]; Phạm Ngọc Lan | 36h |  | 2,062 | 2,062 |  |
| 49 | 6.2 | Phân công thành viên nhóm ra mắt |  | 1d | 2026-03-31 08:00 | 2026-03-31 17:00 | 48 |  |  | 2015-10-05 16:00 | 2015-10-06 16:00 | 1d | 21d | 0d |  |  | Nguyễn Minh Quân | 8h |  | 420 | 420 |  |
| 50 | 6.3 | Hoàn thành bảng câu hỏi cho tác giả |  | 5d | 2026-04-01 08:00 | 2026-04-07 17:00 | 49 |  |  | 2015-10-06 16:00 | 2015-10-13 16:00 | 5d | 21d | 0d |  |  | Lê Anh Tuấn; Bùi Văn Khải; Du lịch [0.1%] | 80h |  | 3,550 | 3,550 |  |
| 51 | 6.4 | Sắp xếp phỏng vấn tác giả |  | 1d | 2026-04-08 08:00 | 2026-04-08 17:00 | 50 |  |  | 2015-10-13 16:00 | 2015-10-14 16:00 | 1d | 21d | 0d |  |  | Lê Anh Tuấn | 8h |  | 310 | 310 |  |
| 52 | 6.5 | Thiết kế và đặt in tài liệu marketing |  | 10d | 2026-04-09 08:00 | 2026-04-22 17:00 | 51 |  |  | 2015-10-14 16:00 | 2015-10-28 16:00 | 10d | 21d |  |  |  | Lê Anh Tuấn | 80h |  | 3,100 | 3,100 |  |
